# ACCL_AmwayHub_2014_ProjectPlan

Schedule from MS Project, 2014-04-18 to 2014-06-02.

## Calendars

- Standard: Mon-Fri 08:00-12:00, 13:00-17:00; Sat-Sun off.

## Resources

| Resource |
| --- |
| 张桥梁 |
| 龙世浩 |
| Ling |
| Tom |
| 江文玉 |
| 张永吉 |
| shadow |
| 黄仕强 |
| 王志 |
| 郑学贤 |
| 游志华 |
| 孙亮 |
| 郑学贤 |

## Schedule

| ID | WBS | Task | Type | Duration | Start | Finish | Predecessors | Baseline start | Baseline finish | Baseline duration | Total slack | Constraint | Resources | Work |
| --- | --- | --- | --- | --- | --- | --- | --- | --- | --- | --- | --- | --- | --- | --- |
| 69 | 1 | **上线部署** |  | 1d | 2014-04-25 | 2014-04-25 |  | 2014-04-25 | 2014-04-25 | 0d | 0d | start no earlier than 2014-04-25 |  | 8h |
| 68 | 1.1 | UAT |  | 1d | 2014-05-27 | 2014-05-27 | 67 | 2014-05-23 | 2014-05-23 | 0d | 0d | start no earlier than 2014-05-23 |  | 8h |
| 67 | 1.2 | 系统测试 |  | 1d | 2014-05-26 | 2014-05-26 | 64 | 2014-05-23 | 2014-05-23 | 0d | 0d | start no earlier than 2014-05-23 |  | 8h |
| 66 | 1.3 | 測試用例評審 |  | 4d | 2014-05-13 | 2014-05-19 | 65 | 2014-05-13 | 2014-05-13 | 0d | 0d | start no earlier than 2014-05-13 |  | 32h |
| 65 | 1.4 | 测试用例编写 |  | 10d | 2014-04-29 | 2014-05-12 |  | 2014-04-29 | 2014-04-29 | 0d | 0d | start no earlier than 2014-04-29 |  | 80h |
| 64 | 1.5 | **集成测试和内测** |  | 5d | 2014-05-19 | 2014-05-23 | 63 | 2014-05-09 | 2014-05-09 | 0d | 0d | start no earlier than 2014-05-19 | 郑学贤 [80%] | 32h |
| 63 | 1.5.1 | 业务模块整合 |  | 6d | 2014-05-09 | 2014-05-16 | 62 | 2014-05-09 | 2014-05-09 | 0d | 0d | start no earlier than 2014-05-09 |  | 48h |
| 62 | 1.5.2 | UI整合验证 |  | 2d | 2014-05-07 | 2014-05-08 | 61 | 2014-04-25 | 2014-04-25 | 0d | 0d | start no earlier than 2014-05-07 | 张永吉 | 16h |
| 61 | 1.5.3 | UI框架整合 |  | 2d | 2014-05-05 | 2014-05-06 |  | 2014-04-25 | 2014-04-25 | 0d | 0d | start no earlier than 2014-05-05 | 张永吉 | 16h |
| 60 | 1.6 | **UI整合** |  | 10d | 2014-05-05 | 2014-05-16 |  | 2014-04-25 | 2014-05-09 | 10d | 0d |  |  |  |
| 59 | 1.6.1 | **后端开发** |  | 1d | 2014-05-07 | 2014-05-08 | 55 | 2014-04-25 | 2014-04-25 | 0d | 0d | start no earlier than 2014-05-07 | 王志 | 8h |
| 58 | 1.6.1.1 | 前端开发 |  | 1d | 2014-05-08 | 2014-05-09 | 56 | 2014-04-25 | 2014-04-25 | 0d | 0d | start no earlier than 2014-05-08 | 龙世浩 | 8h |
| 57 | 1.6.2 | 图片上传 |  | 2d | 2014-05-07 | 2014-05-09 |  | 2014-04-25 | 2014-04-25 | 0d | 0d |  |  |  |
| 56 | 1.6.3 | **系统提醒** |  | 1d | 2014-05-07 | 2014-05-08 | 55 | 2014-04-25 | 2014-04-25 | 0d | 0d | start no earlier than 2014-05-07 | 龙世浩 | 8h |
| 55 | 1.6.3.1 | 数据处理 |  | 1d | 2014-05-06 | 2014-05-07 | 54 | 2014-04-25 | 2014-04-25 | 0d | 0d | start no earlier than 2014-05-06 | 王志 | 8h |
| 54 | 1.6.3.2 | 数据采集 |  | 1d | 2014-05-05 | 2014-05-06 | 52 | 2014-04-25 | 2014-04-25 | 0d | 0d | start no earlier than 2014-05-05 | 龙世浩 | 8h |
| 53 | 1.6.4 | **数据同步** |  | 2d | 2014-05-05 | 2014-05-07 |  | 2014-04-25 | 2014-04-25 | 0d | 0d |  |  |  |
| 52 | 1.6.4.1 | 微信 |  | 0.5d | 2014-05-05 | 2014-05-05 | 51 | 2014-04-25 | 2014-04-25 | 0d | 0d | start no earlier than 2014-05-05 | 龙世浩 | 4h |
| 51 | 1.6.4.2 | 邮件 |  | 0.5d | 2014-05-02 | 2014-05-02 | 50 | 2014-04-25 | 2014-04-25 | 0d | 0d | start no earlier than 2014-05-02 | 龙世浩 | 4h |
| 50 | 1.6.4.3 | 短信 | milestone | 0d | 2014-05-02 | 2014-05-02 | 48 | 2014-04-25 | 2014-04-25 | 0d | 0d | start no earlier than 2014-05-02 | 龙世浩 |  |
| 49 | 1.6.5 | **关怀方式** |  | 1d | 2014-05-02 | 2014-05-05 |  | 2014-04-25 | 2014-04-25 | 0d | 0d |  |  |  |
| 48 | 1.6.5.1 | 待办事项 |  | 1d | 2014-05-01 | 2014-05-02 | 47 | 2014-04-25 | 2014-04-25 | 0d | 0d | start no earlier than 2014-05-01 | 龙世浩 | 8h |
| 47 | 1.6.5.2 | 重要日子提醒 |  | 0.5d | 2014-05-01 | 2014-05-01 | 32 | 2014-04-25 | 2014-04-25 | 0d | 0d | start no earlier than 2014-05-01 | 龙世浩 | 4h |
| 46 | 1.6.6 | 待办事件 |  | 1.5d | 2014-05-01 | 2014-05-02 |  | 2014-04-25 | 2014-04-25 | 0d | 0d |  |  |  |

| ID | WBS | Task | Duration | Start | Finish | Predecessors | Baseline start | Baseline finish | Baseline duration | Total slack | Constraint | Resources | Work |
| --- | --- | --- | --- | --- | --- | --- | --- | --- | --- | --- | --- | --- | --- |
| 45 | 1.6.7 | **顾客标签** | 1.5d | 2014-05-06 | 2014-05-07 | 43 | 2014-04-25 | 2014-04-25 | 0d | 0d | start no earlier than 2014-05-06 | 黄仕强 | 12h |
| 44 | 1.6.7.1 | 数据存储 | 0.5d | 2014-05-05 | 2014-05-05 | 42 | 2014-04-25 | 2014-04-25 | 0d | 0d | start no earlier than 2014-05-05 | 黄仕强 | 4h |
| 43 | 1.6.8 | 顾客关怀 | 0.5d | 2014-05-05 | 2014-05-05 |  | 2014-04-25 | 2014-04-25 | 0d | 0d |  |  |  |
| 42 | 1.6.9 | **顾客动态** | 0.25d | 2014-05-02 | 2014-05-05 | 41 | 2014-04-25 | 2014-04-25 | 0d | 0d | start no earlier than 2014-05-02 | 黄仕强 | 2h |
| 41 | 1.6.9.1 | 生活习惯 | 0.25d | 2014-05-02 | 2014-05-02 | 40 | 2014-04-25 | 2014-04-25 | 0d | 0d | start no earlier than 2014-05-02 | 黄仕强 | 2h |
| 40 | 1.6.9.2 | 结识方式 | 0.25d | 2014-05-02 | 2014-05-02 | 39 | 2014-04-25 | 2014-04-25 | 0d | 0d | start no earlier than 2014-05-02 | 黄仕强 | 2h |
| 39 | 1.6.9.3 | 联系方式 | 0.25d | 2014-05-01 | 2014-05-02 | 38 | 2014-04-25 | 2014-04-25 | 0d | 0d | start no earlier than 2014-05-01 | 黄仕强 | 2h |
| 38 | 1.6.9.4 | 顾客爱好 | 0.25d | 2014-05-01 | 2014-05-01 | 37 | 2014-04-25 | 2014-04-25 | 0d | 0d | start no earlier than 2014-05-01 | 黄仕强 | 2h |
| 37 | 1.6.9.5 | 家庭成员 | 0.25d | 2014-05-01 | 2014-05-01 | 36 | 2014-04-25 | 2014-04-25 | 0d | 0d | start no earlier than 2014-05-01 | 黄仕强 | 2h |
| 36 | 1.6.9.6 | 基本信息 | 0.25d | 2014-05-01 | 2014-05-01 | 32 | 2014-04-25 | 2014-04-25 | 0d | 0d | start no earlier than 2014-05-01 | 黄仕强 | 2h |
| 35 | 1.6.10 | 顾客管理 | 1.75d | 2014-05-01 | 2014-05-02 |  | 2014-04-25 | 2014-04-25 | 0d | 0d |  |  |  |
| 34 | 1.7 | **业务逻辑编码** | 6.5d | 2014-05-01 | 2014-05-09 |  | 2014-04-25 | 2014-04-25 | 0d | 0d |  |  |  |
| 33 | 1.7.1 | 设计文档评审 | 1d | 2014-05-02 | 2014-05-05 | 32 | 2014-05-02 | 2014-05-02 | 0d | 0d | start no earlier than 2014-05-02 |  | 8h |
| 32 | 1.7.2 | **编写设计文档** | 2.96d | 2014-04-28 | 2014-04-30 |  | 2014-04-25 | 2014-04-25 | 0d | 0d | start no earlier than 2014-04-28 | 龙世浩 [99.2%]; 黄仕强 [99.2%] | 47h |
| 31 | 1.7.2.1 | 后端数据设计 | 1d | 2014-04-25 | 2014-04-25 |  | 2014-04-25 | 2014-04-25 | 0d | 0d | start no earlier than 2014-04-25 | 王志 | 8h |
| 30 | 1.7.2.2 | 前端数据设计 | 1d | 2014-04-25 | 2014-04-25 |  | 2014-04-25 | 2014-04-25 | 0d | 0d | start no earlier than 2014-04-25 | 黄仕强; 龙世浩 | 16h |
| 29 | 1.7.3 | **数据库设计** | 1d | 2014-04-25 | 2014-04-25 |  | 2014-04-25 | 2014-04-25 | 0d | 0d |  |  |  |
| 28 | 1.7.3.1 | 图片上传 | 0.67d | 2014-04-25 | 2014-04-25 |  | 2014-04-25 | 2014-04-25 | 0d | 0d | start no earlier than 2014-04-25 | 龙世浩; 张永吉; 王志 | 16h |
| 27 | 1.7.3.2 | 系统提醒的设计 | 3d | 2014-04-25 | 2014-04-29 |  | 2014-04-25 | 2014-04-25 | 0d | 0d | start no earlier than 2014-04-25 | 龙世浩 | 24h |
| 26 | 1.7.3.3 | 顾客动态字段功能 | 2d | 2014-04-25 | 2014-04-28 |  | 2014-04-25 | 2014-04-25 | 0d | 0d | start no earlier than 2014-04-25 | 黄仕强 | 16h |
| 25 | 1.7.4 | 功能设计 | 3d | 2014-04-25 | 2014-04-29 |  | 2014-04-25 | 2014-04-25 | 0d | 0d |  |  |  |
| 24 | 1.7.5 | 框架开发 | 1d | 2014-04-25 | 2014-04-25 |  | 2014-04-25 | 2014-04-25 | 0d | 0d | start no earlier than 2014-04-25 | 张永吉 | 8h |
| 23 | 1.8 | **设计和规划** | 6.03d | 2014-04-25 | 2014-05-05 |  | 2014-04-25 | 2014-05-02 | 5.03d | 0d |  |  |  |
| 22 | 1.8.1 | 需求文档评审 | 1d | 2014-04-28 | 2014-04-29 |  | 2014-04-28 | 2014-04-28 | 0d | 0d | start no earlier than 2014-04-28 |  | 8h |
| 21 | 1.8.2 | 需求文档编写 | 2d | 2014-04-25 | 2014-04-28 |  | 2014-04-25 | 2014-04-25 | 0d | 0d | start no earlier than 2014-04-25 |  | 16h |
| 20 | 1.8.3 | 需求沟通 | 1d | 2014-04-18 | 2014-04-18 |  | 2014-04-18 | 2014-04-18 | 0d | 0d |  |  | 8h |

| ID | WBS | Task | Duration | Start | Finish | Predecessors | Baseline start | Baseline finish | Baseline duration | Total slack | Constraint | Resources | Work |
| --- | --- | --- | --- | --- | --- | --- | --- | --- | --- | --- | --- | --- | --- |
| 19 | 1.9 | **需求分析** | 7.97d | 2014-04-18 | 2014-04-29 |  | 2014-04-18 | 2014-04-28 | 6.97d | 0d |  |  |  |
| 18 | 1.9.1 | 项目过程定义 | 0.5d | 2014-04-28 | 2014-04-28 | 17 | 2014-04-25 | 2014-04-25 | 0d | 0d | start no earlier than 2014-04-28 | Ling; Tom; 江文玉; 张桥梁 | 16h |
| 17 | 1.9.2 | 工作量确认 | 0.5d | 2014-04-28 | 2014-04-28 | 16 | 2014-04-25 | 2014-04-25 | 0d | 0d | start no earlier than 2014-04-28 | 张桥梁; Ling | 8h |
| 16 | 1.9.3 | 功能点重估 | 1d | 2014-04-25 | 2014-04-25 |  | 2014-04-25 | 2014-04-25 | 0d | 0d | start no earlier than 2014-04-25 | 龙世浩 | 8h |
| 15 | 1.10 | 项目管理 | 2d | 2014-04-25 | 2014-04-28 |  | 2014-04-25 | 2014-04-25 | 0d | 0d |  |  |  |
| 14 | 2 | **顾客管理（IOS）** | 28d | 2014-04-18 | 2014-05-27 |  | 2014-04-18 | 2014-05-23 | 25.97d | 0d |  |  |  |
| 13 | 2.1 | 整体移交测试 | 1d | 2014-06-02 | 2014-06-02 | 12 | 2014-05-02 | 2014-05-02 | 0d | 0d | start no earlier than 2014-06-02 | shadow | 8h |
| 12 | 2.2 | 内部整体测试 | 6d | 2014-05-23 | 2014-05-30 | 11 | 2014-05-02 | 2014-05-02 | 0d | 0d | start no earlier than 2014-05-23 | 郑学贤 | 48h |
| 11 | 2.3 | 项目整体整合 | 1d | 2014-05-22 | 2014-05-22 | 10 | 2014-05-02 | 2014-05-02 | 0d | 0d | start no earlier than 2014-05-22 | 张永吉 | 8h |
| 10 | 2.4 | 银联插件整合进NativeWidget | 4d | 2014-05-16 | 2014-05-21 | 6, 7, 9 | 2014-05-02 | 2014-05-02 | 0d | 0d | start no earlier than 2014-05-16 | 孙亮 | 32h |
| 9 | 2.5 | 合并原项目NativeWidget例行版本变更 | 3d | 2014-05-13 | 2014-05-15 | 8 | 2014-04-18 | 2014-04-18 | 0d | 0d | start no earlier than 2014-05-13 | 张永吉 | 24h |
| 8 | 2.6 | 合并原项目ShellApp例行版本变更 | 2d | 2014-05-09 | 2014-05-12 |  | 2014-04-18 | 2014-04-18 | 0d | 0d | start no earlier than 2014-05-09 | 张永吉 | 16h |
| 7 | 2.7 | 银联插件后端 | 8.88d | 2014-05-02 | 2014-05-14 |  | 2014-05-02 | 2014-05-02 | 0d | 0d | start no earlier than 2014-05-02 | 王志 | 71h |
| 6 | 2.8 | 银联插件前端公共模块 | 3.88d | 2014-05-08 | 2014-05-14 | 5 | 2014-05-02 | 2014-05-02 | 0d | 0d | start no earlier than 2014-05-08 | 游志华 | 31h |
| 5 | 2.9 | 架设CocoaPods安利私有库 | 1d | 2014-05-02 | 2014-05-02 |  | 2014-04-18 | 2014-04-18 | 0d | 0d | start no earlier than 2014-05-02 | 张永吉 | 8h |
| 4 | 2.10 | 崩溃日志后端 | 1d | 2014-04-30 | 2014-04-30 |  | 2014-04-30 | 2014-04-30 | 0d | 0d | start no earlier than 2014-04-30 | 王志 | 8h |
| 3 | 2.11 | 用户行为管理后端 | 1d | 2014-04-29 | 2014-04-29 | 2 | 2014-04-29 | 2014-04-29 | 0d | 0d | start no earlier than 2014-04-29 | 王志 | 8h |
| 2 | 2.12 | 熟悉后台 | 2d | 2014-04-25 | 2014-04-28 |  | 2014-04-25 | 2014-04-25 | 0d | 0d | start no earlier than 2014-04-25 | 王志 | 16h |
| 1 | 3 | ShellApp升级 | 27d | 2014-04-25 | 2014-06-02 |  | 2014-04-18 | 2014-05-02 | 10d | 0d |  |  |  |
